# Projet GL

Schedule from Planner, 2023-01-03 to 2023-01-26.
Ensimag

## Calendars

- Default: Mon-Fri 09:00-12:30, 14:00-19:30; Sat-Sun 14:00-19:00.

## Resources

| Resource |
| --- |
| Jorge |
| Logan |
| Nils |
| Virgile |
| Vianney |

## Schedule

| ID | WBS | Task | Duration | Start | Finish | Predecessors | Complete | Resources | Work |
| --- | --- | --- | --- | --- | --- | --- | --- | --- | --- |
| 1 | 1 | **Sprint 1: Hello World** |  | 2023-01-03 09:00 | 2023-01-05 19:30 |  | 85% |  | 69h |
| 2 | 1.1 | A. Analyse sujet + code | 0.75d | 2023-01-04 11:00 | 2023-01-04 18:30 | 19 | 100% | Jorge [50%]; Vianney [50%] | 6h |
| 3 | 1.2 | A. Scripts tests lexer | 0.12d | 2023-01-04 18:30 | 2023-01-04 19:30 | 2 | 100% | Vianney | 1h |
| 4 | 1.3 | A. Scripts tests parser | 0.12d | 2023-01-05 09:00 | 2023-01-05 10:00 | 3 | 100% | Vianney | 1h |
| 5 | 1.4 | A. Parser | 1d | 2023-01-05 10:00 | 2023-01-05 19:30 | 4 | 100% | Vianney | 8h |
| 6 | 1.5 | A. Lexer | 0.12d | 2023-01-04 18:30 | 2023-01-04 19:30 | 2 | 100% | Jorge | 1h |
| 7 | 1.6 | A. Décompilation | 1.12d | 2023-01-05 09:00 | 2023-01-05 19:30 | 6 | 100% | Jorge | 9h |
| 8 | 1.7 | B. Analyse du sujet | 1.38d | 2023-01-04 11:00 | 2023-01-05 14:30 | 19 | 100% | Logan [50%]; Nils [50%] | 11h |
| 9 | 1.8 | B. Base de tests | 0.25d | 2023-01-05 14:30 | 2023-01-05 16:30 | 8 | 100% | Logan [50%]; Nils [50%] | 2h |
| 10 | 1.9 | B. Vérification contextuelle | 0.25d | 2023-01-05 16:30 | 2023-01-05 18:30 | 9 | 100% | Logan [50%]; Nils [50%] | 2h |
| 11 | 1.10 | B. Décoration de l'arbre | 0.12d | 2023-01-05 18:30 | 2023-01-05 19:30 | 10 | 100% | Logan [50%]; Nils [50%] | 1h |
| 12 | 1.11 | C. Analyse sujet + code | 1.5d | 2023-01-04 11:00 | 2023-01-05 15:30 | 19 | 100% | Virgile | 12h |
| 13 | 1.12 | C. Parser CLI | 0.25d | 2023-01-05 15:30 | 2023-01-05 17:30 | 12 | 100% | Virgile | 2h |
| 14 | 1.13 | C. Code assembleur | 0.25d | 2023-01-05 17:30 | 2023-01-05 19:30 | 13 | 100% | Virgile | 2h |
| 15 | 1.14 | G. Charte d'équipe | 0.62d | 2023-01-03 09:00 | 2023-01-03 15:30 |  | 100% | Jorge [20%]; Logan [20%]; Nils [20%]; Virgile [20%]; Vianney [20%] | 5h |
| 16 | 1.15 | G. SWOT + fiches indiv | 0.12d | 2023-01-03 15:30 | 2023-01-03 16:30 | 15 | 100% | Jorge [20%]; Logan [20%]; Nils [20%]; Virgile [20%]; Vianney [20%] | 1h |
| 17 | 1.16 | G. Config outils | 0.25d | 2023-01-03 16:30 | 2023-01-03 18:30 | 16 | 100% | Jorge [20%]; Logan [20%]; Nils [20%]; Virgile [20%]; Vianney [20%] | 2h |
| 18 | 1.17 | G. Répartition du travail | 0.25d | 2023-01-03 18:30 | 2023-01-04 10:00 | 17 | 100% | Jorge [20%]; Logan [20%]; Nils [20%]; Virgile [20%]; Vianney [20%] | 2h |
| 19 | 1.18 | G. Planning | 0.12d | 2023-01-04 10:00 | 2023-01-04 11:00 | 18 | 100% | Jorge [20%]; Logan [20%]; Nils [20%]; Virgile [20%]; Vianney [20%] | 1h |
| 20 | 2 | **Sprint 2: Sans objet** |  | 2023-01-06 09:00 | 2023-01-12 12:00 | 1 |  |  | 116h |
| 21 | 2.1 | A. Base de tests | 1.12d | 2023-01-07 16:00 | 2023-01-09 10:00 | 38 | 100% | Jorge [50%]; Vianney [50%] | 9h |
| 22 | 2.2 | A. Parser | 1.12d | 2023-01-09 10:00 | 2023-01-10 10:00 | 21 | 100% | Vianney | 9h |
| 23 | 2.3 | A. Decompile | 1.12d | 2023-01-09 10:00 | 2023-01-10 10:00 | 21 | 100% | Jorge | 9h |
| 24 | 2.4 | A. Doc | 0.38d | 2023-01-10 10:00 | 2023-01-10 14:30 | 23, 22 | 100% | Jorge [50%]; Vianney [50%] | 3h |
| 25 | 2.5 | B. Analyse sujet | 0.62d | 2023-01-07 16:00 | 2023-01-08 16:00 | 38 | 100% | Logan [50%]; Nils [50%] | 5h |
| 26 | 2.6 | B. Base de tests | 0.88d | 2023-01-08 16:00 | 2023-01-09 14:30 | 25 | 100% | Logan [50%]; Nils [50%] | 7h |
| 27 | 2.7 | B. Amélioration scripts tests | 0.5d | 2023-01-09 14:30 | 2023-01-09 18:30 | 26 | 100% | Logan [50%]; Nils [50%] | 4h |
| 28 | 2.8 | B. EnvironnementType | 0.12d | 2023-01-09 18:30 | 2023-01-09 19:30 | 27 | 100% | Logan [50%]; Nils [50%] | 1h |
| 29 | 2.9 | B. Passe 3 | 1.12d | 2023-01-10 09:00 | 2023-01-10 19:30 | 28 | 100% | Logan [50%]; Nils [50%] | 9h |
| 30 | 2.10 | B. Doc | 0.38d | 2023-01-11 09:00 | 2023-01-11 12:00 | 29 | 100% | Logan [50%]; Nils [50%] | 3h |
| 31 | 2.11 | C. Analyse sujet | 1.62d | 2023-01-07 16:00 | 2023-01-09 15:30 | 38 | 100% | Virgile | 13h |
| 32 | 2.12 | C. Base + script de tests | 0.5d | 2023-01-09 15:30 | 2023-01-09 19:30 | 31 | 100% | Virgile | 4h |
| 33 | 2.13 | C. Code assembleur | 1.12d | 2023-01-10 09:00 | 2023-01-10 19:30 | 32 | 100% | Virgile | 9h |
| 34 | 2.14 | C. Doc | 0.38d | 2023-01-11 09:00 | 2023-01-11 12:00 | 33 | 100% | Virgile | 3h |
| 35 | 2.15 | G. Préparation suivi 1 | 0.25d | 2023-01-06 09:00 | 2023-01-06 11:00 |  | 100% | Jorge [20%]; Logan [20%]; Nils [20%]; Virgile [20%]; Vianney [20%] | 2h |
| 36 | 2.16 | G. Orga sprint | 0.25d | 2023-01-06 11:00 | 2023-01-06 14:30 | 35 | 100% | Jorge [20%]; Logan [20%]; Nils [20%]; Virgile [20%]; Vianney [20%] | 2h |
| 37 | 2.17 | G. Spécification extension | 0.5d | 2023-01-06 14:30 | 2023-01-06 18:30 | 36 | 100% | Jorge [20%]; Logan [20%]; Nils [20%]; Virgile [20%]; Vianney [20%] | 4h |
| 38 | 2.18 | G. Gestion des risques | 0.38d | 2023-01-06 18:30 | 2023-01-07 16:00 | 37 | 100% | Jorge [20%]; Logan [20%]; Nils [20%]; Virgile [20%]; Vianney [20%] | 3h |
| 39 | 2.19 | G. Préparation suivi 2 | 1d | 2023-01-10 14:30 | 2023-01-11 12:00 | 24 | 100% | Jorge [50%]; Vianney [50%] | 8h |
| 40 | 2.20 | G. Clôture de sprint | 1.12d | 2023-01-11 12:00 | 2023-01-12 12:00 | 39 | 100% | Jorge [20%]; Logan [20%]; Nils [20%]; Virgile [20%]; Vianney [20%] | 9h |

| ID | WBS | Task | Duration | Start | Finish | Predecessors | Complete | Resources | Work |
| --- | --- | --- | --- | --- | --- | --- | --- | --- | --- |
| 41 | 3 | **Sprint 3: Avec objet** |  | 2023-01-12 12:00 | 2023-01-18 19:30 | 20 |  |  | 194h |
| 42 | 3.1 | A. Classes tree | 0.62d | 2023-01-12 14:30 | 2023-01-12 19:30 | 63 | 100% | Jorge | 5h |
| 43 | 3.2 | A. Parser | 0.25d | 2023-01-12 14:30 | 2023-01-12 16:30 | 63 | 100% | Vianney | 2h |
| 44 | 3.3 | B. Analyse sujet | 0.62d | 2023-01-12 14:30 | 2023-01-12 19:30 | 63 | 100% | Logan [50%]; Nils [50%] | 5h |
| 45 | 3.4 | B. Base de tests | 1.12d | 2023-01-13 09:00 | 2023-01-13 19:30 | 44 | 100% | Logan [50%]; Nils [50%] | 9h |
| 46 | 3.5 | B. Verify 3 passes | 3.38d | 2023-01-14 14:00 | 2023-01-17 18:30 | 45 | 100% | Logan [57%]; Nils [57%] | 31h |
| 47 | 3.6 | B. Doc | 0.5d | 2023-01-17 18:30 | 2023-01-18 12:00 | 46 | 100% | Logan [50%]; Nils [50%] | 4h |
| 48 | 3.7 | C. Analyse sujet | 0.5d | 2023-01-15 18:00 | 2023-01-16 12:00 | 54 | 100% | Virgile | 4h |
| 49 | 3.8 | C. Base de tests | 0.88d | 2023-01-16 12:00 | 2023-01-17 10:00 | 48 | 100% | Virgile | 7h |
| 50 | 3.9 | C. CodeGen | 2.12d | 2023-01-17 10:00 | 2023-01-18 19:30 | 49 | 100% | Virgile | 17h |
| 51 | 3.10 | E. Tests calc évidents + redondants | 0.62d | 2023-01-15 18:00 | 2023-01-16 14:30 | 54 | 100% | Jorge | 5h |
| 52 | 3.11 | E. Recherche calc redondants | 1.12d | 2023-01-13 09:00 | 2023-01-13 19:30 | 42 | 100% | Jorge | 9h |
| 53 | 3.12 | E. Calculs redondants | 1.38d | 2023-01-17 15:30 | 2023-01-18 17:30 | 65 | 100% | Jorge | 11h |
| 54 | 3.13 | E. Calculs évidents | 1.12d | 2023-01-14 14:00 | 2023-01-15 18:00 | 52, 62 | 100% | Jorge [50%]; Virgile [50%] | 9h |
| 55 | 3.14 | E. Doc calc évidents + redondants | 0.25d | 2023-01-18 17:30 | 2023-01-18 19:30 | 53 | 100% | Jorge | 2h |
| 56 | 3.15 | E. Tests var inutiles | 1d | 2023-01-12 16:30 | 2023-01-13 15:30 | 43 | 100% | Vianney | 8h |
| 57 | 3.16 | E. Var inutiles sans objet | 1.38d | 2023-01-13 15:30 | 2023-01-15 16:00 | 56 | 100% | Vianney | 11h |
| 58 | 3.17 | E. Var inutiles avec objet | 2.62d | 2023-01-15 16:00 | 2023-01-17 19:30 | 57 | 100% | Vianney | 21h |
| 59 | 3.18 | E. Doc var inutiles | 0.38d | 2023-01-18 09:00 | 2023-01-18 12:00 | 58 | 100% | Vianney | 3h |
| 60 | 3.19 | E. Tests optim asm | 0.25d | 2023-01-12 14:30 | 2023-01-12 16:30 | 63 | 100% | Virgile | 2h |
| 61 | 3.20 | E. Optim asm | 1.25d | 2023-01-12 16:30 | 2023-01-13 17:30 | 60 | 100% | Virgile | 10h |
| 62 | 3.21 | E. Doc optim asm | 0.25d | 2023-01-13 17:30 | 2023-01-13 19:30 | 61 | 100% | Virgile | 2h |
| 63 | 3.22 | G. Orga sprint 3 | 0.12d | 2023-01-12 12:00 | 2023-01-12 14:30 |  | 100% | Jorge [20%]; Logan [20%]; Nils [20%]; Virgile [20%]; Vianney [20%] | 1h |
| 64 | 3.23 | G. Préparation suivi 3 | 0.5d | 2023-01-16 14:30 | 2023-01-16 18:30 | 51 | 100% | Jorge | 4h |
| 65 | 3.24 | G. Impact énergétique | 0.75d | 2023-01-16 18:30 | 2023-01-17 15:30 | 64 | 100% | Jorge | 6h |
| 66 | 3.25 | G. Clôture sprint 3 | 0.75d | 2023-01-18 12:00 | 2023-01-18 19:30 | 59, 47 | 100% | Logan [33%]; Nils [33%]; Vianney [33%] | 6h |

| ID | WBS | Task | Type | Duration | Start | Finish | Predecessors | Constraint | Resources | Work |
| --- | --- | --- | --- | --- | --- | --- | --- | --- | --- | --- |
| 67 | 4 | **Sprint 4** |  |  | 2023-01-19 09:00 | 2023-01-24 19:30 |  |  |  | 130h |
| 68 | 4.1 | E. Améliorations var inutiles |  | 1.62d | 2023-01-19 09:00 | 2023-01-20 14:30 | 66 |  | Vianney | 13h |
| 69 | 4.2 | E. Tests fonctions inline |  | 0.5d | 2023-01-20 14:30 | 2023-01-20 18:30 | 68 |  | Vianney | 4h |
| 70 | 4.3 | E. Fonctions inline |  | 1.38d | 2023-01-20 18:30 | 2023-01-22 19:00 | 69 |  | Vianney | 11h |
| 71 | 4.4 | E. Tests optim générale |  | 0.25d | 2023-01-19 09:00 | 2023-01-19 11:00 | 66 |  | Logan [50%]; Nils [50%] | 2h |
| 72 | 4.5 | E. Dév des produits en shift |  | 1.25d | 2023-01-19 11:00 | 2023-01-20 12:00 | 71, 66 |  | Logan [50%]; Nils [50%] | 10h |
| 73 | 4.6 | E. Facto var dans calc simples |  | 0.88d | 2023-01-20 12:00 | 2023-01-21 15:00 | 72 |  | Logan [50%]; Nils [50%] | 7h |
| 74 | 4.7 | E. Facto var dans expr |  | 1.12d | 2023-01-21 15:00 | 2023-01-22 19:00 | 73 |  | Logan [50%]; Nils [50%] | 9h |
| 75 | 4.8 | E. Implémentation redondant |  | 1.25d | 2023-01-21 14:00 | 2023-01-22 19:00 | 76 |  | Jorge | 10h |
| 76 | 4.9 | E. Test calc redondants |  | 1.12d | 2023-01-20 09:00 | 2023-01-20 19:30 | 80 |  | Jorge | 9h |
| 77 | 4.10 | E. Fix codegen |  | 1.62d | 2023-01-19 09:00 | 2023-01-20 14:30 | 66 |  | Virgile | 13h |
| 78 | 4.11 | E. Calculs évidents |  | 1.25d | 2023-01-20 14:30 | 2023-01-21 19:00 | 77 |  | Virgile | 10h |
| 79 | 4.12 | E. Optimisation assembleur |  | 0.62d | 2023-01-22 14:00 | 2023-01-22 19:00 | 78 |  | Virgile | 5h |
| 80 | 4.13 | G. Impact énergétique |  | 1.12d | 2023-01-19 09:00 | 2023-01-19 19:30 | 66 |  | Jorge | 9h |
| 81 | 4.14 | G. Clôture sprint |  | 1.12d | 2023-01-23 09:00 | 2023-01-23 19:30 | 79, 75, 70 |  | Jorge [20%]; Logan [20%]; Nils [20%]; Virgile [20%]; Vianney [20%] | 9h |
| 82 | 4.15 | G. Prép soutenance |  | 1.12d | 2023-01-24 09:00 | 2023-01-24 19:30 | 81 |  | Jorge [20%]; Logan [20%]; Nils [20%]; Virgile [20%]; Vianney [20%] | 9h |
| 83 | 5 | Rendu version intermédiaire | milestone | 0d | 2023-01-16 09:00 | 2023-01-16 00:00 |  | must start on 2023-01-16 00:00 |  |  |
| 84 | 6 | Rendu Final | milestone | 0d | 2023-01-23 09:00 | 2023-01-23 00:00 |  | must start on 2023-01-23 00:00 |  |  |
| 85 | 7 | Rendu documentation | milestone | 0d | 2023-01-23 09:00 | 2023-01-23 00:00 |  | must start on 2023-01-23 00:00 |  |  |
| 86 | 8 | Rendu Bilan | milestone | 0d | 2023-01-25 09:00 | 2023-01-25 00:00 |  | must start on 2023-01-25 00:00 |  |  |
| 87 | 9 | Soutenance | milestone | 0d | 2023-01-26 09:00 | 2023-01-26 00:00 |  | must start on 2023-01-26 00:00 |  |  |
